# SR1620

How a schedule from a web Gantt chart changed from version to version. A marks actual dates.

## Version 1 (saved 2024-12-13)

| ID | Task | Duration | Start | Finish |
| --- | --- | --- | --- | --- |
| 2 | CEC202407-001 | 1d | 2024-12-16 | 2024-12-16 |

## Version 2 (saved 2024-12-13)

Last finish 2024-12-16 → 2025-02-28 (+74d).

Added:

| ID | Task | Duration | Start | Finish | Predecessors |
| --- | --- | --- | --- | --- | --- |
| 2 | **SR1620** | 56d | 2024-12-13 | 2025-02-28 |  |
| 4 | 需求/设计 | 8d | 2024-12-13 | 2024-12-24 |  |
| 5 | 技术方案 | 3d | 2024-12-25 | 2024-12-27 | 4 |
| 6 | 软件开发 | 20d | 2024-12-30 | 2025-01-24 | 5 |
| 7 | 软件集成 | 8d | 2025-02-05 | 2025-02-14 |  |
| 8 | 软件测试 | 10d | 2025-02-17 | 2025-02-28 | 7 |
| 9 | **SR1420/SR1420-i** | 42d | 2024-12-25 | 2025-02-20 |  |
| 10 | **EC202407-011（与分片电极合并）** | 42d | 2024-12-25 | 2025-02-20 |  |
| 11 | 需求/设计 | 8d | 2024-12-25 | 2025-01-03 | 4 |
| 12 | 技术方案 | 3d | 2025-01-06 | 2025-01-08 | 11 |
| 13 | 软件开发 | 12d | 2025-01-09 | 2025-01-24 | 12 |
| 14 | 软件集成 | 6d | 2025-02-05 | 2025-02-12 |  |
| 15 | 软件测试 | 6d | 2025-02-13 | 2025-02-20 | 14 |
| 16 | **SR1633** | 40d | 2025-01-06 | 2025-02-28 |  |
| 17 | **CECXXX（与分片电极合并）** | 40d | 2025-01-06 | 2025-02-28 |  |
| 18 | 需求/设计 | 3d | 2025-01-06 | 2025-01-08 | 11 |
| 19 | 技术方案 | 3d | 2025-01-09 | 2025-01-13 | 18 |
| 20 | 软件开发1（春节前） | 9d | 2025-01-14 | 2025-01-24 | 19 |
| 21 | 软件开发2（春节后） | 11d | 2025-02-05 | 2025-02-19 |  |
| 22 | 软件集成 | 3d | 2025-02-20 | 2025-02-24 | 21 |
| 23 | 软件测试 | 4d | 2025-02-25 | 2025-02-28 | 22 |
| 24 | **SR2202** | 20d | 2024-12-16 | 2025-01-10 |  |
| 25 | DC202409-003 | 1d | 2024-12-16 | 2024-12-16 |  |
| 26 | **DC202407-004（与分片电极合并）** | 16d | 2024-12-20 | 2025-01-10 |  |
| 27 | 技术方案 | 3d | 2024-12-20 | 2024-12-24 |  |
| 28 | 软件开发 | 5d | 2024-12-25 | 2024-12-31 | 27 |
| 29 | 软件集成 | 3d | 2025-01-01 | 2025-01-03 | 28 |
| 30 | 软件测试 | 5d | 2025-01-06 | 2025-01-10 | 29 |
| 31 | **生产软件** | 16d | 2025-02-05 | 2025-02-26 |  |
| 32 | **EC202407-028** | 16d | 2025-02-05 | 2025-02-26 |  |
| 33 | 技术方案 | 3d | 2025-02-05 | 2025-02-07 |  |
| 34 | 软件开发 | 5d | 2025-02-10 | 2025-02-14 | 33 |
| 35 | 软件集成 | 3d | 2025-02-17 | 2025-02-19 | 34 |
| 36 | 软件测试 | 5d | 2025-02-20 | 2025-02-26 | 35 |

Changed:

| ID | Task | Start | Finish | Duration |
| --- | --- | --- | --- | --- |
| 3 | **CEC202407-001** | 2024-12-16 → 2024-12-13 (-3d) | 2024-12-16 → 2025-02-28 (+74d) | 1d → 56d |
