# SR1421

How a schedule from a web Gantt chart changed from version to version. A marks actual dates.

## Version 1 (saved 2024-08-30)

| ID | WBS | Task | Duration | Start | Finish |
| --- | --- | --- | --- | --- | --- |
| 2 | 1 | **SR1420** | 1d | 2024-08-30 | 2024-08-30 |
| 3 |  | 软件开发 | 1d | 2024-08-30 | 2024-08-30 |

## Version 2 (saved 2024-08-30)

Last finish 2024-08-30 → 2024-09-26 (+27d). Complete tasks 0 → 3.

Added:

| ID | Task | Duration | Start | Finish | Predecessors |
| --- | --- | --- | --- | --- | --- |
| 3 | **需求/设计** | 10d | 2024-08-21 | 2024-09-03 |  |
| 4 | 研发需求 | 3d | 2024-08-21 | 2024-08-23 |  |
| 5 | UI/UE | 4d | 2024-08-26 | 2024-08-29 | 4 |
| 6 | 需求规格书 | 3d | 2024-08-30 | 2024-09-03 | 5 |
| 8 | 技术方案 | 2d | 2024-08-29 | 2024-08-30 |  |
| 9 | 设计规格书 | 1d | 2024-09-02 | 2024-09-02 | 8 |
| 10 | 代码实现 | 3d | 2024-09-03 | 2024-09-05 | 9 |
| 11 | 单元测试 | 1d | 2024-09-06 | 2024-09-06 | 10 |
| 12 | **软件集成** | 7d | 2024-09-02 | 2024-09-10 |  |
| 13 | 集成计划 | 1d | 2024-09-02 | 2024-09-02 | 8 |
| 14 | 集成测试 | 2d | 2024-09-06 | 2024-09-09 | 10 |
| 15 | 集成报告 | 1d | 2024-09-10 | 2024-09-10 | 14 |
| 16 | **软件测试** | 10d | 2024-09-02 | 2024-09-13 |  |
| 17 | 测试计划 | 1d | 2024-09-02 | 2024-09-02 | 8 |
| 18 | 软件测试 | 3d | 2024-09-10 | 2024-09-12 | 14 |
| 19 | 测试报告 | 1d | 2024-09-13 | 2024-09-13 | 18 |
| 20 | 901 | 1d | 2024-09-13 | 2024-09-13 | 18 |
| 21 | RHF | 1d | 2024-09-13 | 2024-09-13 | 18 |
| 22 | **SR1420-i** | 19d | 2024-09-02 | 2024-09-26 |  |
| 23 | **软件开发** | 6d | 2024-09-02 | 2024-09-09 |  |
| 24 | 设计规格书 | 1d | 2024-09-02 | 2024-09-02 |  |
| 25 | 代码实现 | 4d | 2024-09-03 | 2024-09-06 | 24 |
| 26 | 单元测试 | 1d | 2024-09-09 | 2024-09-09 | 25 |
| 27 | **软件集成** | 4d | 2024-09-16 | 2024-09-19 |  |
| 28 | 集成计划 | 1d | 2024-09-16 | 2024-09-16 |  |
| 29 | 集成测试 | 2d | 2024-09-17 | 2024-09-18 | 28 |
| 30 | 集成报告 | 1d | 2024-09-19 | 2024-09-19 | 29 |
| 31 | **软件测试** | 9d | 2024-09-16 | 2024-09-26 |  |
| 32 | 测试计划 | 1d | 2024-09-16 | 2024-09-16 |  |
| 33 | 软件测试 | 3d | 2024-09-19 | 2024-09-23 | 29 |
| 34 | 测试报告 | 1d | 2024-09-24 | 2024-09-24 | 33 |
| 35 | 901 | 1d | 2024-09-25 | 2024-09-25 | 34 |
| 36 | RHF | 1d | 2024-09-26 | 2024-09-26 | 35 |

Changed:

| ID | Task | Start | Finish | Duration | Complete |
| --- | --- | --- | --- | --- | --- |
| 2 | **SR1420** | 2024-08-30 → 2024-08-21 (-9d) | 2024-08-30 → 2024-09-13 (+14d) | 1d → 18d | 0% → 32% |
| 7 | **软件开发** | 2024-08-30 → 2024-08-29 (-1d) | 2024-08-30 → 2024-09-06 (+7d) | 1d → 7d | 0% → 29% |
