# 软件研发

How a schedule from a web Gantt chart changed from version to version. A marks actual dates.

## Version 1 (saved 2024-09-24)

| ID | WBS | Task | Duration | Start | Finish | Predecessors |
| --- | --- | --- | --- | --- | --- | --- |
| 2 | 1 | **SR1620** | 46d | 2024-07-01 | 2024-09-02 |  |
| 3 | 1.1 | **需求/设计** | 15d | 2024-07-01 | 2024-07-19 |  |
| 4 |  | 研发需求 | 10d | 2024-07-01 | 2024-07-12 |  |
| 5 |  | UI/UE | 5d | 2024-07-15 | 2024-07-19 | 4 |
| 6 | 1.2 | **软件开发** | 21d | 2024-07-15 | 2024-08-12 |  |
| 7 |  | 技术方案 | 3d | 2024-07-15 | 2024-07-17 | 4 |
| 8 |  | 设计规格书 | 1d | 2024-07-18 | 2024-07-18 | 7 |
| 9 |  | 代码实现 | 15d | 2024-07-22 | 2024-08-09 | 5 |
| 10 |  | 单元测试 | 1d | 2024-08-12 | 2024-08-12 | 9 |
| 11 | 1.3 | **软件集成** | 5d | 2024-08-13 | 2024-08-19 |  |
| 12 |  | 集成计划 | 1d | 2024-08-13 | 2024-08-13 | 10 |
| 13 |  | 集成测试 | 3d | 2024-08-14 | 2024-08-16 | 12 |
| 14 |  | 集成报告 | 1d | 2024-08-19 | 2024-08-19 | 13 |
| 15 | 1.4 | **软件测试** | 10d | 2024-08-20 | 2024-09-02 |  |
| 16 |  | 测试计划 | 2d | 2024-08-20 | 2024-08-21 | 14 |
| 17 |  | 软件测试 | 5d | 2024-08-22 | 2024-08-28 | 16 |
| 18 |  | 测试报告 | 1d | 2024-08-29 | 2024-08-29 | 17 |
| 19 |  | 901 | 1d | 2024-08-30 | 2024-08-30 | 18 |
| 20 |  | RHF | 1d | 2024-09-02 | 2024-09-02 | 19 |
| 21 | 2 | **SR1633** | 45d | 2024-07-22 | 2024-09-20 |  |
| 22 |  | 需求/设计 | 10d | 2024-07-22 | 2024-08-02 |  |
| 23 |  | 软件开发 | 20d | 2024-08-05 | 2024-08-30 | 22 |
| 24 |  | 软件集成 | 5d | 2024-09-02 | 2024-09-06 | 23 |
| 25 |  | 软件测试 | 10d | 2024-09-09 | 2024-09-20 | 24 |
| 26 | 3 | **SR1420/SR1420-i** | 24d | 2024-08-05 | 2024-09-05 |  |
| 27 |  | 需求/设计 | 2d | 2024-08-05 | 2024-08-06 |  |
| 28 |  | 软件开发 | 10d | 2024-08-07 | 2024-08-20 | 27 |
| 29 |  | 软件集成 | 4d | 2024-08-21 | 2024-08-26 | 28 |
| 30 |  | 软件测试 | 8d | 2024-08-27 | 2024-09-05 | 29 |
| 31 | 4 | **客服系统** | 21d | 2024-08-07 | 2024-09-04 |  |
| 32 |  | 需求/设计 | 2d | 2024-08-07 | 2024-08-08 |  |
| 33 |  | 软件开发 | 10d | 2024-08-09 | 2024-08-22 | 32 |
| 34 |  | 软件集成 | 3d | 2024-08-23 | 2024-08-27 | 33 |
| 35 |  | 软件测试 | 6d | 2024-08-28 | 2024-09-04 | 34 |
| 36 | 5 | **SR2202** | 25d | 2024-08-09 | 2024-09-12 |  |
| 37 |  | 需求/设计 | 3d | 2024-08-09 | 2024-08-13 |  |
| 38 |  | 软件开发 | 10d | 2024-08-14 | 2024-08-27 | 37 |
| 39 |  | 软件集成 | 4d | 2024-08-28 | 2024-09-02 | 38 |
| 40 |  | 软件测试 | 8d | 2024-09-03 | 2024-09-12 | 39 |
| 41 | 6 | **远程LFP采集** | 22d | 2024-08-14 | 2024-09-12 |  |
| 42 |  | 需求/设计 | 3d | 2024-08-14 | 2024-08-16 |  |
| 43 |  | 软件开发 | 10d | 2024-08-19 | 2024-08-30 | 42 |
| 44 |  | 软件集成 | 3d | 2024-09-02 | 2024-09-04 | 43 |
| 45 |  | 软件测试 | 6d | 2024-09-05 | 2024-09-12 | 44 |

## Version 2 (saved 2024-09-24)

Last finish stays 2024-09-20.

Added:

| ID | Task | Duration | Start | Finish |
| --- | --- | --- | --- | --- |
| 2 | **SR1620横版** | 46d | 2024-07-01 | 2024-09-02 |
| 21 | **SR1620竖版** | 45d | 2024-07-22 | 2024-09-20 |

Removed: 2 SR1620; 21 SR1633

## Version 3 (saved 2024-09-24)

Last finish stays 2024-09-20.

Added:

| ID | Task | Duration | Start | Finish |
| --- | --- | --- | --- | --- |
| 21 | **SR1633** | 45d | 2024-07-22 | 2024-09-20 |

Removed: 21 SR1620竖版

## Version 4 (saved 2024-09-24)

Last finish stays 2024-09-20.

Added:

| ID | Task | Duration | Start | Finish |
| --- | --- | --- | --- | --- |
| 21 | **SR1620竖版** | 45d | 2024-07-22 | 2024-09-20 |

Removed: 21 SR1633; 26 SR1420/SR1420-i; 27 需求/设计; 28 软件开发; 29 软件集成; 30 软件测试; 31 客服系统; 32 需求/设计; 33 软件开发; 34 软件集成; 35 软件测试; 36 SR2202; 37 需求/设计; 38 软件开发; 39 软件集成; 40 软件测试; 41 远程LFP采集; 42 需求/设计; 43 软件开发; 44 软件集成; 45 软件测试

## Version 5 (saved 2024-09-24)

Last finish stays 2024-09-20.

Added:

| ID | Task | Duration | Start | Finish | Predecessors |
| --- | --- | --- | --- | --- | --- |
| 26 | **客服系统** | 21d | 2024-08-07 | 2024-09-04 |  |
| 27 | 需求/设计 | 2d | 2024-08-07 | 2024-08-08 |  |
| 28 | 软件开发 | 10d | 2024-08-09 | 2024-08-22 | 27 |
| 29 | 软件集成 | 3d | 2024-08-23 | 2024-08-27 | 28 |
| 30 | 软件测试 | 6d | 2024-08-28 | 2024-09-04 | 29 |
| 31 | **SR2202** | 25d | 2024-08-09 | 2024-09-12 |  |
| 32 | 需求/设计 | 3d | 2024-08-09 | 2024-08-13 |  |
| 33 | 软件开发 | 10d | 2024-08-14 | 2024-08-27 | 32 |
| 34 | 软件集成 | 4d | 2024-08-28 | 2024-09-02 | 33 |
| 35 | 软件测试 | 8d | 2024-09-03 | 2024-09-12 | 34 |
| 36 | **远程LFP采集** | 22d | 2024-08-14 | 2024-09-12 |  |
| 37 | 需求/设计 | 3d | 2024-08-14 | 2024-08-16 |  |
| 38 | 软件开发 | 10d | 2024-08-19 | 2024-08-30 | 37 |
| 39 | 软件集成 | 3d | 2024-09-02 | 2024-09-04 | 38 |
| 40 | 软件测试 | 6d | 2024-09-05 | 2024-09-12 | 39 |

## Version 6 (saved 2024-09-24)

Last finish stays 2024-09-20.

Added:

| ID | Task | Duration | Start | Finish | Predecessors |
| --- | --- | --- | --- | --- | --- |
| 26 | **SR1420/SR1420-i** | 24d | 2024-08-05 | 2024-09-05 |  |
| 27 | 需求/设计 | 2d | 2024-08-05 | 2024-08-06 |  |
| 28 | 软件开发 | 10d | 2024-08-07 | 2024-08-20 | 27 |
| 29 | 软件集成 | 4d | 2024-08-21 | 2024-08-26 | 28 |
| 30 | 软件测试 | 8d | 2024-08-27 | 2024-09-05 | 29 |

## Version 7 (saved 2024-09-24)

Last finish stays 2024-09-20.

Removed: 3 需求/设计; 4 研发需求; 5 UI/UE; 26 SR1420/SR1420-i; 27 需求/设计; 28 软件开发; 29 软件集成; 30 软件测试; 31 客服系统; 32 需求/设计; 33 软件开发; 34 软件集成; 35 软件测试; 36 SR2202; 37 需求/设计; 38 软件开发; 39 软件集成; 40 软件测试; 41 远程LFP采集; 42 需求/设计; 43 软件开发; 44 软件集成; 45 软件测试

Changed:

| ID | Task | Predecessors |
| --- | --- | --- |
| 4 | 技术方案 | 研发需求 → none |
| 6 | 代码实现 | UI/UE → none |
