# 上位机软件

How a schedule from a web Gantt chart changed from version to version. A marks actual dates.

## Version 1 (saved 2024-07-04)

| ID | WBS | Task | Duration | Start | Finish | Predecessors |
| --- | --- | --- | --- | --- | --- | --- |
| 2 | 1 | **SR1620** | 45d | 2024-07-01 | 2024-08-30 |  |
| 3 | 1.1 | **需求/设计** | 15d | 2024-07-01 | 2024-07-19 |  |
| 4 |  | 研发需求 | 10d | 2024-07-01 | 2024-07-12 |  |
| 5 |  | UI/UE | 5d | 2024-07-15 | 2024-07-19 | 4 |
| 6 | 1.2 | **软件开发** | 20d | 2024-07-15 | 2024-08-09 |  |
| 7 |  | 技术方案 | 3d | 2024-07-15 | 2024-07-17 | 4 |
| 8 |  | 设计规格书 | 1d | 2024-07-18 | 2024-07-18 | 7 |
| 9 |  | 代码实现 | 15d | 2024-07-19 | 2024-08-08 | 8 |
| 10 |  | 单元测试 | 1d | 2024-08-09 | 2024-08-09 | 9 |
| 11 | 1.3 | **软件集成** | 5d | 2024-08-12 | 2024-08-16 |  |
| 12 |  | 集成计划 | 1d | 2024-08-12 | 2024-08-12 | 10 |
| 13 |  | 集成测试 | 3d | 2024-08-13 | 2024-08-15 | 12 |
| 14 |  | 集成报告 | 1d | 2024-08-16 | 2024-08-16 | 13 |
| 15 | 1.4 | **软件测试** | 10d | 2024-08-19 | 2024-08-30 |  |
| 16 |  | 测试计划 | 2d | 2024-08-19 | 2024-08-20 | 14 |
| 17 |  | 软件测试 | 5d | 2024-08-21 | 2024-08-27 | 16 |
| 18 |  | 测试报告 | 1d | 2024-08-28 | 2024-08-28 | 17 |
| 19 |  | 901 | 1d | 2024-08-29 | 2024-08-29 | 18 |
| 20 |  | RHF | 1d | 2024-08-30 | 2024-08-30 | 19 |

## Version 2 (saved 2024-07-04)

Last finish stays 2024-08-30.

Added:

| ID | Task | Duration | Start | Finish |
| --- | --- | --- | --- | --- |
| 21 | **SR1633** | 1d | 2024-08-01 | 2024-08-01 |
| 22 | 需求/设计 | 1d | 2024-08-01 | 2024-08-01 |
| 23 | 软件开发 | 1d | 2024-08-01 | 2024-08-01 |
| 24 | 软件集成 | 1d | 2024-08-01 | 2024-08-01 |
| 25 | 软件测试 | 1d | 2024-08-01 | 2024-08-01 |
| 26 | **SR1420/SR1420-i** | 13d | 2024-08-01 | 2024-08-19 |
| 27 | 需求/设计 | 2d | 2024-08-01 | 2024-08-02 |
| 28 | 软件开发 | 4d | 2024-08-02 | 2024-08-07 |
| 29 | 软件集成 | 3d | 2024-08-08 | 2024-08-12 |
| 30 | 软件测试 | 5d | 2024-08-13 | 2024-08-19 |
| 31 | **客服系统** | 1d | 2024-08-01 | 2024-08-01 |
| 32 | 需求/设计 | 1d | 2024-08-01 | 2024-08-01 |
| 33 | 软件开发 | 1d | 2024-08-01 | 2024-08-01 |
| 34 | 软件集成 | 1d | 2024-08-01 | 2024-08-01 |
| 35 | 软件测试 | 1d | 2024-08-01 | 2024-08-01 |
| 36 | **SR2202** | 1d | 2024-08-01 | 2024-08-01 |
| 37 | 需求/设计 | 1d | 2024-08-01 | 2024-08-01 |
| 38 | 软件开发 | 1d | 2024-08-01 | 2024-08-01 |
| 39 | 软件集成 | 1d | 2024-08-01 | 2024-08-01 |
| 40 | 软件测试 | 1d | 2024-08-01 | 2024-08-01 |
| 41 | **远程LFP采集** | 1d | 2024-08-01 | 2024-08-01 |
| 42 | 需求/设计 | 1d | 2024-08-01 | 2024-08-01 |
| 43 | 软件开发 | 1d | 2024-08-01 | 2024-08-01 |
| 44 | 软件集成 | 1d | 2024-08-01 | 2024-08-01 |
| 45 | 软件测试 | 1d | 2024-08-01 | 2024-08-01 |

## Version 3 (saved 2024-07-05)

Last finish 2024-08-30 → 2024-09-20 (+21d).

Changed:

| ID | Task | Start | Finish | Duration | Predecessors |
| --- | --- | --- | --- | --- | --- |
| 21 | **SR1633** | 2024-08-01 → 2024-07-22 (-10d) | 2024-08-01 → 2024-09-20 (+50d) | 1d → 45d |  |
| 22 | 需求/设计 | 2024-08-01 → 2024-07-22 (-10d) | 2024-08-01 → 2024-08-02 (+1d) | 1d → 10d |  |
| 23 | 软件开发 | 2024-08-01 → 2024-08-05 (+4d) | 2024-08-01 → 2024-08-30 (+29d) | 1d → 20d | none → 22 |
| 24 | 软件集成 | 2024-08-01 → 2024-09-02 (+32d) | 2024-08-01 → 2024-09-06 (+36d) | 1d → 5d | none → 23 |
| 25 | 软件测试 | 2024-08-01 → 2024-09-09 (+39d) | 2024-08-01 → 2024-09-20 (+50d) | 1d → 10d | none → 24 |
| 26 | **SR1420/SR1420-i** | 2024-08-01 → 2024-08-05 (+4d) | 2024-08-19 → 2024-09-05 (+17d) | 13d → 24d |  |
| 27 | 需求/设计 | 2024-08-01 → 2024-08-05 (+4d) | 2024-08-02 → 2024-08-06 (+4d) |  |  |
| 28 | 软件开发 | 2024-08-02 → 2024-08-07 (+5d) | 2024-08-07 → 2024-08-20 (+13d) | 4d → 10d | none → 27 |
| 29 | 软件集成 | 2024-08-08 → 2024-08-21 (+13d) | 2024-08-12 → 2024-08-26 (+14d) | 3d → 4d | none → 28 |
| 30 | 软件测试 | 2024-08-13 → 2024-08-27 (+14d) | 2024-08-19 → 2024-09-05 (+17d) | 5d → 8d | none → 29 |
| 31 | **客服系统** | 2024-08-01 → 2024-08-07 (+6d) | 2024-08-01 → 2024-09-04 (+34d) | 1d → 21d |  |
| 32 | 需求/设计 | 2024-08-01 → 2024-08-07 (+6d) | 2024-08-01 → 2024-08-08 (+7d) | 1d → 2d |  |
| 33 | 软件开发 | 2024-08-01 → 2024-08-09 (+8d) | 2024-08-01 → 2024-08-22 (+21d) | 1d → 10d | none → 32 |
| 34 | 软件集成 | 2024-08-01 → 2024-08-23 (+22d) | 2024-08-01 → 2024-08-27 (+26d) | 1d → 3d | none → 33 |
| 35 | 软件测试 | 2024-08-01 → 2024-08-28 (+27d) | 2024-08-01 → 2024-09-04 (+34d) | 1d → 6d | none → 34 |
| 36 | **SR2202** | 2024-08-01 → 2024-08-09 (+8d) | 2024-08-01 → 2024-09-12 (+42d) | 1d → 25d |  |
| 37 | 需求/设计 | 2024-08-01 → 2024-08-09 (+8d) | 2024-08-01 → 2024-08-13 (+12d) | 1d → 3d |  |
| 38 | 软件开发 | 2024-08-01 → 2024-08-14 (+13d) | 2024-08-01 → 2024-08-27 (+26d) | 1d → 10d | none → 37 |
| 39 | 软件集成 | 2024-08-01 → 2024-08-28 (+27d) | 2024-08-01 → 2024-09-02 (+32d) | 1d → 4d | none → 38 |
| 40 | 软件测试 | 2024-08-01 → 2024-09-03 (+33d) | 2024-08-01 → 2024-09-12 (+42d) | 1d → 8d | none → 39 |
| 41 | **远程LFP采集** | 2024-08-01 → 2024-08-14 (+13d) | 2024-08-01 → 2024-09-12 (+42d) | 1d → 22d |  |
| 42 | 需求/设计 | 2024-08-01 → 2024-08-14 (+13d) | 2024-08-01 → 2024-08-16 (+15d) | 1d → 3d |  |
| 43 | 软件开发 | 2024-08-01 → 2024-08-19 (+18d) | 2024-08-01 → 2024-08-30 (+29d) | 1d → 10d | none → 42 |
| 44 | 软件集成 | 2024-08-01 → 2024-09-02 (+32d) | 2024-08-01 → 2024-09-04 (+34d) | 1d → 3d | none → 43 |
| 45 | 软件测试 | 2024-08-01 → 2024-09-05 (+35d) | 2024-08-01 → 2024-09-12 (+42d) | 1d → 6d | none → 44 |
